# PLN_ODS_2010_2

Schedule from MS Project, 2016-03-18 to 2016-11-14, status date 2011-06-02, A marks actual dates.
Telecom Personal S.A.

## Calendars

- Estándar: Mon-Wed 09:00-13:00, 14:00-18:00; Thu 09:00-13:00, 14:00-16:00; Fri 09:00-13:00, 14:00-18:00; Sat-Sun off. Exceptions (off unless hours are given): 2016-05-25 (Día de La Revolución de Mayo), 2016-06-20 (Día Paso a la Inmortalidad del Gral Belgrano), 2016-07-08 (Puente Turistico), 2016-08-15 (Día Paso a la Inmortalidad del Gral San Martin), 2016-10-10 (Día Del Respeto a la Diversidad Cultural).

## Resources

| Resource |
| --- |
| PM |
| CATEDRA |
| LD |
| AFSR1 |
| AFSR2 |
| AFSSR2 |
| ARQ |
| AFSSR1 |
| DSR1 |
| DSR2 |
| DSSR1 |
| DSSR2 |
| DJR1 |
| AQ1 |
| AQ2 |

## Schedule

| ID | WBS | Task | Type | Duration | Start | Finish | Predecessors | Complete | Remaining | Baseline start | Baseline finish | Baseline duration | Total slack | Free slack | Constraint | Resources | Work | Actual work |
| --- | --- | --- | --- | --- | --- | --- | --- | --- | --- | --- | --- | --- | --- | --- | --- | --- | --- | --- |
| 1 | 1 | **Sistema adaptativo de formación educativa** |  | 158d | 2016-03-18 A | 2016-11-14 |  | 17% | 131.78d | 2016-03-18 | 2016-11-14 | 1264h | 0d |  |  |  | 3672h | 320h |
| 2 | 1.1 | **Etapa 1: Plan** |  | 40d | 2016-03-18 A | 2016-05-16 A |  | 100% |  | 2016-03-18 | 2016-05-16 | 320h |  |  |  |  | 320h | 320h |
| 3 | 1.1.1 | 1.1. Elaborar Acta de Proyecto |  | 5d | 2016-03-18 A | 2016-03-25 A |  | 100% |  | 2016-03-18 | 2016-03-25 | 5d |  |  | start no earlier than 2016-03-18 | PM | 40h | 40h |
| 4 | 1.1.2 | 1.2. Elaborar Documento de WBS |  | 4d | 2016-03-25 A | 2016-03-31 A | 3 | 100% |  | 2016-03-25 | 2016-03-31 | 4d |  |  |  | PM | 32h | 32h |
| 5 | 1.1.3 | 1.3. Elaborar Gantt de Proyect |  | 4d | 2016-03-31 A | 2016-04-06 A | 4 | 100% |  | 2016-03-31 | 2016-04-06 | 4d |  |  |  | PM | 32h | 32h |
| 6 | 1.1.4 | 1.4. Elaborar Matriz de Habilidades y Competencias |  | 4d | 2016-04-06 A | 2016-04-12 A | 5 | 100% |  | 2016-04-06 | 2016-04-12 | 4d |  |  |  | PM | 32h | 32h |
| 7 | 1.1.5 | 1.5. Elaborar Matriz de Roles y Responsabilidades |  | 4d | 2016-04-12 A | 2016-04-18 A | 6 | 100% |  | 2016-04-12 | 2016-04-18 | 4d |  |  |  | PM | 32h | 32h |
| 8 | 1.1.6 | 1.6. Elaborar Matriz de Comunicaciones |  | 4d | 2016-04-19 A | 2016-04-25 A | 7 | 100% |  | 2016-04-19 | 2016-04-25 | 4d |  |  |  | PM | 32h | 32h |
| 9 | 1.1.7 | 1.7. Elaborar Matriz de Costos de Proyecto |  | 5d | 2016-04-25 A | 2016-05-02 A | 8 | 100% |  | 2016-04-25 | 2016-05-02 | 5d |  |  |  | PM | 40h | 40h |
| 10 | 1.1.8 | 1.8. Elaborar Documentos Tabla de Riesgos |  | 5d | 2016-05-02 A | 2016-05-09 A | 9 | 100% |  | 2016-05-02 | 2016-05-09 | 5d |  |  |  | PM | 40h | 40h |
| 11 | 1.1.9 | 1.9. Aprobar Documentación |  | 5d | 2016-05-09 A | 2016-05-16 A | 10 | 100% |  | 2016-05-09 | 2016-05-16 | 5d |  |  |  | CATEDRA | 40h | 40h |
| 12 | 1.2 | **Entregables Etapa 1** |  | 0d | 2016-05-16 | 2016-05-16 |  |  |  | 2016-05-16 | 2016-05-16 | 0h | 98d | 0d |  |  |  |  |
| 13 | 1.2.1 | [1] Acta de Proyecto | milestone | 0d | 2016-05-16 | 2016-05-16 |  |  |  | 2016-05-16 | 2016-05-16 | 0d | 98d |  | start no earlier than 2016-05-16 |  |  |  |
| 14 | 1.2.2 | [2] Documento de WBS | milestone | 0d | 2016-05-16 | 2016-05-16 |  |  |  | 2016-05-16 | 2016-05-16 | 0d | 98d |  | start no earlier than 2016-05-16 |  |  |  |
| 15 | 1.2.3 | [3] Gantt de Proyect | milestone | 0d | 2016-05-16 | 2016-05-16 |  |  |  | 2016-05-16 | 2016-05-16 | 0d | 98d |  | start no earlier than 2016-05-16 |  |  |  |
| 16 | 1.2.4 | [4] Matriz de Habilidades y Competencias | milestone | 0d | 2016-05-16 | 2016-05-16 |  |  |  | 2016-05-16 | 2016-05-16 | 0d | 98d |  | start no earlier than 2016-05-16 |  |  |  |
| 17 | 1.2.5 | [5] Matriz de Roles y Responsabilidade | milestone | 0d | 2016-05-16 | 2016-05-16 |  |  |  | 2016-05-16 | 2016-05-16 | 0d | 98d |  | start no earlier than 2016-05-16 |  |  |  |
| 18 | 1.2.6 | [6] Matriz de Comunicaciones | milestone | 0d | 2016-05-16 | 2016-05-16 |  |  |  | 2016-05-16 | 2016-05-16 | 0d | 98d |  | start no earlier than 2016-05-16 |  |  |  |
| 19 | 1.2.7 | [7] Matriz de Costos de Proyecto | milestone | 0d | 2016-05-16 | 2016-05-16 |  |  |  | 2016-05-16 | 2016-05-16 | 0d | 98d |  | start no earlier than 2016-05-16 |  |  |  |
| 20 | 1.2.8 | [8] Documentos Tabla de Riesgos | milestone | 0d | 2016-05-16 | 2016-05-16 |  |  |  | 2016-05-16 | 2016-05-16 | 0d | 98d |  | start no earlier than 2016-05-16 |  |  |  |
| 21 | 1.3 | **Etapa 2: Relevamiento y Definición de Cursos de Aprendizaje** |  | 20d | 2016-05-17 | 2016-06-15 |  |  |  | 2016-05-17 | 2016-06-15 | 160h | 98d |  |  |  | 752h |  |
| 22 | 1.3.1 | 2.1. Elaborar Documentación e Información de Cursos |  | 6d | 2016-05-17 | 2016-05-26 | 12 |  |  | 2016-05-17 | 2016-05-26 | 6d | 100d | 0d |  | AFSR1; AFSR2; AFSSR2 | 144h |  |
| 23 | 1.3.2 | 2.2. Elaborar Informe de Relevamiento |  | 6d | 2016-05-26 | 2016-06-03 | 22 |  |  | 2016-05-26 | 2016-06-03 | 6d | 100d | 0d |  | AFSR1; AFSR2; AFSSR2 | 144h |  |
| 24 | 1.3.3 | 2.3. Elaborar Casos de Uso del Negocio |  | 6d | 2016-06-03 | 2016-06-13 | 23 |  |  | 2016-06-03 | 2016-06-13 | 6d | 100d |  |  | AFSR1; AFSR2; AFSSR2 | 144h |  |
| 25 | 1.3.4 | 2.4. Elaborar Documento de Arquitectura |  | 10d | 2016-05-17 | 2016-06-01 | 12 |  |  | 2016-05-17 | 2016-06-01 | 10d | 98d | 0d |  | LD; ARQ | 160h |  |
| 26 | 1.3.5 | 2.5. Elaborar Documento de Diseño de Interfaces |  | 10d | 2016-06-01 | 2016-06-15 | 25 |  |  | 2016-06-01 | 2016-06-15 | 10d | 98d |  |  | LD; ARQ | 160h |  |

| ID | WBS | Task | Type | Duration | Start | Finish | Predecessors | Baseline start | Baseline finish | Baseline duration | Total slack | Free slack | Constraint | Resources | Work |
| --- | --- | --- | --- | --- | --- | --- | --- | --- | --- | --- | --- | --- | --- | --- | --- |
| 27 | 1.4 | **Entregables Etapa 2** |  | 0d | 2016-06-15 | 2016-06-15 |  | 2016-06-15 | 2016-06-15 | 0h | 50d | 0d |  |  |  |
| 28 | 1.4.1 | [1] Documentación e Información de Curso | milestone | 0d | 2016-06-15 | 2016-06-15 |  | 2016-06-15 | 2016-06-15 | 0d | 50d |  | start no earlier than 2016-06-15 |  |  |
| 29 | 1.4.2 | [2] Documentación de Relevamiento | milestone | 0d | 2016-06-15 | 2016-06-15 |  | 2016-06-15 | 2016-06-15 | 0d | 50d |  | start no earlier than 2016-06-15 |  |  |
| 30 | 1.4.3 | [3] Documentaicón de Casos de Uso del Negocio | milestone | 0d | 2016-06-15 | 2016-06-15 |  | 2016-06-15 | 2016-06-15 | 0d | 50d |  | start no earlier than 2016-06-15 |  |  |
| 31 | 1.4.4 | [4] Documentación de Arquitectura | milestone | 0d | 2016-06-15 | 2016-06-15 |  | 2016-06-15 | 2016-06-15 | 0d | 50d |  | start no earlier than 2016-06-15 |  |  |
| 32 | 1.4.5 | [5] Documentación de Diseño de Interfaces | milestone | 0d | 2016-06-15 | 2016-06-15 |  | 2016-06-15 | 2016-06-15 | 0d | 50d |  | start no earlier than 2016-06-15 |  |  |
| 33 | 1.5 | **Etapa 3: Análisis y Desarrollo** |  | 90d | 2016-06-16 | 2016-11-01 |  | 2016-06-16 | 2016-11-14 | 784h | 8d |  |  |  | 2512h |
| 34 | 1.5.1 | **Incremento 3.1** |  | 48d | 2016-06-16 | 2016-08-30 |  | 2016-06-16 | 2016-08-30 | 384h | 50d |  |  |  | 1448h |
| 35 | 1.5.1.1 | 3.1.1. Casos de uso del módulo de estado y diagnóstico |  | 5d | 2016-06-16 | 2016-06-24 | 27 | 2016-06-16 | 2016-06-24 | 5d | 88d | 0d |  | AFSSR1 | 40h |
| 36 | 1.5.1.2 | 3.1.2. Casos de uso del módulo de autoaprendizaje del sistema |  | 5d | 2016-06-16 | 2016-06-24 | 27 | 2016-06-16 | 2016-06-24 | 5d | 50d | 0d |  | AFSR1; AFSR2 | 80h |
| 37 | 1.5.1.3 | 3.1.3. Casos de uso del submódulo inteligente de selección de contenido (CAT) |  | 5d | 2016-06-24 | 2016-07-01 | 36 | 2016-06-24 | 2016-07-01 | 5d | 50d | 0d |  | AFSR1; AFSR2 | 80h |
| 38 | 1.5.1.4 | 3.1.4. Casos de uso del módulo de gestión de contenido |  | 5d | 2016-06-24 | 2016-07-01 | 35 | 2016-06-24 | 2016-07-01 | 5d | 88d |  |  | AFSSR1 | 40h |
| 39 | 1.5.1.5 | 3.1.5. Documentación de Casos de Prueba |  | 3d | 2016-07-01 | 2016-07-06 | 37 | 2016-07-01 | 2016-07-06 | 3d | 50d | 0d |  | AFSR1; AFSR2 | 48h |
| 40 | 1.5.1.6 | 3.1.6. Código fuente del módulo de estado y diagnóstico |  | 10d | 2016-07-06 | 2016-07-22 | 39 | 2016-07-06 | 2016-07-22 | 10d | 55d | 0d |  | DSR1; DSSR1; DJR1 | 240h |
| 41 | 1.5.1.7 | 3.1.7. Código fuente del módulo de autoaprendizaje del sistema |  | 20d | 2016-07-06 | 2016-08-05 | 39 | 2016-07-06 | 2016-08-05 | 20d | 50d | 0d |  | DSR2; DSSR2 | 320h |
| 42 | 1.5.1.8 | 3.1.8. Código fuente del submódulo inteligente de selección de contenido (CAT) |  | 15d | 2016-07-22 | 2016-08-16 | 40 | 2016-07-22 | 2016-08-16 | 15d | 55d | 5d |  | DSR1; DSSR1; DJR1 | 360h |
| 43 | 1.5.1.9 | 3.1.9. Código fuente del módulo de gestión de contenido |  | 10d | 2016-08-08 | 2016-08-23 | 41 | 2016-08-08 | 2016-08-23 | 10d | 50d | 0d |  | DSR2; DSSR2 | 160h |
| 44 | 1.5.1.10 | 3.1.10. Documento de pruebas ejecutadas |  | 5d | 2016-08-23 | 2016-08-30 | 43, 42 | 2016-08-23 | 2016-08-30 | 5d | 50d |  |  | AQ1; AQ2 | 80h |
| 45 | 1.5.2 | **Entregables Incremento 3.1** |  | 0d | 2016-08-30 | 2016-08-30 |  | 2016-08-30 | 2016-08-30 | 0h | 22d | 0d |  |  |  |
| 46 | 1.5.2.1 | [1] Código fuente de la aplicación | milestone | 0d | 2016-08-30 | 2016-08-30 |  | 2016-08-30 | 2016-08-30 | 0d | 22d |  | start no earlier than 2016-08-30 |  |  |
| 47 | 1.5.2.2 | [2] Manual de usuario. | milestone | 0d | 2016-08-30 | 2016-08-30 |  | 2016-08-30 | 2016-08-30 | 0d | 22d |  | start no earlier than 2016-08-30 |  |  |
| 48 | 1.5.2.3 | [3] Documento de pruebas ejecutadas. | milestone | 0d | 2016-08-30 | 2016-08-30 |  | 2016-08-30 | 2016-08-30 | 0d | 22d |  | start no earlier than 2016-08-30 |  |  |
| 49 | 1.5.3 | **Incremento 3.2** |  | 28d | 2016-08-30 | 2016-10-12 |  | 2016-08-30 | 2016-10-12 | 224h | 22d |  |  |  | 640h |
| 50 | 1.5.3.1 | 3.2.1. Casos de uso del módulo de métricas de nivel de aprendizaje |  | 4d | 2016-08-30 | 2016-09-05 | 45 | 2016-08-30 | 2016-09-05 | 4d | 46d |  |  | AFSSR1 | 32h |
| 51 | 1.5.3.2 | 3.2.2. Casos de uso del módulo de gestión de perfiles |  | 4d | 2016-08-30 | 2016-09-05 | 45 | 2016-08-30 | 2016-09-05 | 4d | 22d | 0d |  | AFSR1 | 32h |
| 52 | 1.5.3.3 | 3.2.3. Casos de uso del módulo de gestión de cursos |  | 4d | 2016-08-30 | 2016-09-05 | 45 | 2016-08-30 | 2016-09-05 | 4d | 46d |  |  | AFSR2 | 32h |
| 53 | 1.5.3.4 | 3.2.4. Documentación de Casos de Prueba |  | 4d | 2016-09-06 | 2016-09-12 | 51 | 2016-09-06 | 2016-09-12 | 4d | 22d | 0d |  | AFSR1 | 32h |
| 54 | 1.5.3.5 | 3.2.5. Código fuente del módulo de métricas de nivel de aprendizaje |  | 8d | 2016-09-12 | 2016-09-22 | 53 | 2016-09-12 | 2016-09-22 | 8d | 34d |  |  | DSR1; DSSR1; DJR1 | 192h |
| 55 | 1.5.3.6 | 3.2.6. Código fuente del módulo de gestión de perfiles |  | 8d | 2016-09-12 | 2016-09-22 | 53 | 2016-09-12 | 2016-09-22 | 8d | 22d | 0d |  | DSR2; DSSR2 | 128h |
| 56 | 1.5.3.7 | 3.2.7. Código fuente del módulo de gestión de cursos |  | 8d | 2016-09-22 | 2016-10-04 | 55 | 2016-09-22 | 2016-10-04 | 8d | 22d | 0d |  | DSR2; DSSR2 | 128h |
| 57 | 1.5.3.8 | 3.2.8. Documento de pruebas ejecutadas |  | 4d | 2016-10-05 | 2016-10-12 | 56 | 2016-10-05 | 2016-10-12 | 4d | 22d |  |  | AQ1; AQ2 | 64h |

| ID | WBS | Task | Type | Duration | Start | Finish | Predecessors | Baseline start | Baseline finish | Baseline duration | Total slack | Free slack | Constraint | Resources | Work |
| --- | --- | --- | --- | --- | --- | --- | --- | --- | --- | --- | --- | --- | --- | --- | --- |
| 58 | 1.5.4 | **Entregables Incremento 3.2** |  | 0d | 2016-10-12 | 2016-10-12 |  | 2016-10-12 | 2016-10-12 | 0h | 8d | 0d |  |  |  |
| 59 | 1.5.4.1 | [1] Código fuente de la aplicación | milestone | 0d | 2016-10-12 | 2016-10-12 |  | 2016-10-12 | 2016-10-12 | 0d | 8d |  | start no earlier than 2016-10-12 |  |  |
| 60 | 1.5.4.2 | [2] Manual de usuario | milestone | 0d | 2016-10-12 | 2016-10-12 |  | 2016-10-12 | 2016-10-12 | 0d | 8d |  | start no earlier than 2016-10-12 |  |  |
| 61 | 1.5.4.3 | [3] Documento de pruebas ejecutadas | milestone | 0d | 2016-10-12 | 2016-10-12 |  | 2016-10-12 | 2016-10-12 | 0d | 8d |  | start no earlier than 2016-10-12 |  |  |
| 62 | 1.5.5 | **Incremento 3.3** |  | 14d | 2016-10-12 | 2016-11-01 |  | 2016-10-12 | 2016-11-01 | 112h | 8d |  |  |  | 424h |
| 63 | 1.5.5.1 | 3.3.1. Casos de uso del módulo de comunicación de informes de avances |  | 3d | 2016-10-12 | 2016-10-17 | 58 | 2016-10-12 | 2016-10-17 | 3d | 19d |  |  | AFSR1 | 24h |
| 64 | 1.5.5.2 | 3.3.2. Casos de uso de interfaces de usuario |  | 3d | 2016-10-12 | 2016-10-17 | 58 | 2016-10-12 | 2016-10-17 | 3d | 19d |  |  | AFSR2 | 24h |
| 65 | 1.5.5.3 | 3.3.3. Documentación de Casos de Prueba |  | 2d | 2016-10-12 | 2016-10-14 | 58 | 2016-10-12 | 2016-10-14 | 2d | 8d | 0d |  | AFSSR1 | 16h |
| 66 | 1.5.5.4 | 3.3.4. Código fuente del módulo de comunicación de informes de avances |  | 7d | 2016-10-14 | 2016-10-25 | 65 | 2016-10-14 | 2016-10-25 | 7d | 8d | 0d |  | DSR1; DSSR1; DJR1 | 168h |
| 67 | 1.5.5.5 | 3.3.5. Código fuente de interfaces de usuario |  | 7d | 2016-10-14 | 2016-10-25 | 65 | 2016-10-14 | 2016-10-25 | 7d | 8d | 0d |  | DSR2; DSSR2 | 112h |
| 68 | 1.5.5.6 | 3.3.6. Documento de pruebas ejecutadas |  | 5d | 2016-10-25 | 2016-11-01 | 67, 66 | 2016-10-25 | 2016-11-01 | 5d | 8d |  |  | AQ1; AQ2 | 80h |
| 69 | 1.5.6 | **Entregables Incremento 3.3** |  | 0d | 2016-11-01 | 2016-11-01 |  | 2016-11-01 | 2016-11-01 | 0h | 6d | 0d |  |  |  |
| 70 | 1.5.6.1 | [1] Código fuente de la aplicación | milestone | 0d | 2016-11-01 | 2016-11-01 |  | 2016-11-01 | 2016-11-01 | 0d | 6d |  | start no earlier than 2016-11-01 |  |  |
| 71 | 1.5.6.2 | [2] Manual de usuario | milestone | 0d | 2016-11-01 | 2016-11-01 |  | 2016-11-01 | 2016-11-01 | 0d | 6d |  | start no earlier than 2016-11-01 |  |  |
| 72 | 1.5.6.3 | [3] Documento de pruebas ejecutadas | milestone | 0d | 2016-11-01 | 2016-11-01 |  | 2016-11-01 | 2016-11-01 | 0d | 6d |  | start no earlier than 2016-11-01 |  |  |
| 73 | 1.6 | **Etapa 4: Implementación** |  | 2d | 2016-11-02 | 2016-11-04 |  | 2016-11-02 | 2016-11-04 | 16h | 6d |  |  |  | 64h |
| 74 | 1.6.1 | 4.1.Manuales de usuario |  | 2d | 2016-11-02 | 2016-11-04 | 69 | 2016-11-02 | 2016-11-04 | 2d | 6d |  |  | AFSR1 | 16h |
| 75 | 1.6.2 | 4.2 Solución integral en entornos Productivos |  | 2d | 2016-11-02 | 2016-11-04 | 69 | 2016-11-02 | 2016-11-04 | 2d | 6d |  |  | ARQ; LD | 32h |
| 76 | 1.6.3 | 4.3 Documentación de Implantación |  | 2d | 2016-11-02 | 2016-11-04 | 69 | 2016-11-02 | 2016-11-04 | 2d | 6d |  |  | DSR1 | 16h |
| 77 | 1.7 | **Entregables Etapa 4** |  | 0d | 2016-11-04 | 2016-11-04 |  | 2016-11-04 | 2016-11-04 | 0h | 3d | 0d |  |  |  |
| 78 | 1.7.1 | [1] Documentación Manual de Usuario | milestone | 0d | 2016-11-04 | 2016-11-04 |  | 2016-11-04 | 2016-11-04 | 0d | 3d |  | start no earlier than 2016-11-04 |  |  |
| 79 | 1.7.2 | [2] Documentación de Implantación | milestone | 0d | 2016-11-04 | 2016-11-04 |  | 2016-11-04 | 2016-11-04 | 0d | 3d |  | start no earlier than 2016-11-04 |  |  |
| 80 | 1.8 | **Etapa 5: Cierre** |  | 3d | 2016-11-04 | 2016-11-09 |  | 2016-11-04 | 2016-11-14 | 48h | 3d |  |  |  | 24h |
| 81 | 1.8.1 | 5.1 Documento Lecciones Aprendidas |  | 3d | 2016-11-04 | 2016-11-09 | 77 | 2016-11-04 | 2016-11-09 | 3d | 3d | 0d |  | PM | 24h |
| 82 | 1.8.2 | 5.2 Documento Cierre del Proyecto | milestone | 0d | 2016-11-09 | 2016-11-09 | 81 | 2016-11-09 | 2016-11-14 | 3d | 3d |  |  | PM |  |

| ID | WBS | Task | Type | Duration | Start | Finish | Baseline start | Baseline finish | Baseline duration | Total slack | Constraint |
| --- | --- | --- | --- | --- | --- | --- | --- | --- | --- | --- | --- |
| 83 | 1.9 | **Entregables Etapa 5** |  | 0d | 2016-11-14 | 2016-11-14 | 2016-11-14 | 2016-11-14 | 0h | 0d |  |
| 84 | 1.9.1 | [1] Documento Lecciones Aprendidas | milestone | 0d | 2016-11-14 | 2016-11-14 | 2016-11-14 | 2016-11-14 | 0d | 0d | start no earlier than 2016-11-14 |
| 85 | 1.9.2 | [2] Documento Cierre del Proyecto | milestone | 0d | 2016-11-14 | 2016-11-14 | 2016-11-14 | 2016-11-14 | 0d | 0d | start no earlier than 2016-11-14 |
