# PLN_ODS_2010_2

Schedule from MS Project, 2016-03-18 to 2016-11-18, status date 2011-06-02, A marks actual dates.
Telecom Personal S.A.

## Calendars

- Estándar: Mon-Wed 09:00-13:00, 14:00-18:00; Thu 09:00-13:00, 14:00-16:00; Fri 09:00-13:00, 14:00-18:00; Sat-Sun off. Exceptions (off unless hours are given): 2016-05-25 (Día de La Revolución de Mayo), 2016-06-20 (Día Paso a la Inmortalidad del Gral Belgrano), 2016-07-08 (Puente Turistico), 2016-08-15 (Día Paso a la Inmortalidad del Gral San Martin), 2016-10-10 (Día Del Respeto a la Diversidad Cultural).

## Resources

| Resource |
| --- |
| PM |
| CATEDRA |
| LD |
| AFSR1 |
| AFSR2 |
| AFSSR2 |
| ARQ |
| AFSSR1 |
| DSR1 |
| DSR2 |
| DSSR1 |
| DSSR2 |
| DJR1 |
| AQ1 |
| AQ2 |

## Schedule

| ID | WBS | Task | Type | Duration | Start | Finish | Predecessors | Complete | Remaining | Baseline start | Baseline finish | Baseline duration | Total slack | Free slack | Constraint | Resources | Work | Actual work |
| --- | --- | --- | --- | --- | --- | --- | --- | --- | --- | --- | --- | --- | --- | --- | --- | --- | --- | --- |
| 1 | 1 | **Sistema adaptativo de formación educativa** |  | 162.12d | 2016-03-18 A | 2016-11-18 |  | 32% | 110.78d | 2016-03-18 | 2016-11-18 | 1297h | 0d |  |  |  | 3300h | 698h |
| 2 | 1.1 | **Etapa 1: Inicio** |  | 47.38d | 2016-03-18 A | 2016-05-27 |  | 88% | 5.58d | 2016-03-18 | 2016-05-27 | 379h | 114.75d |  |  |  | 764h | 674h |
| 3 | 1.1.1 | Incio del Proyecto + Presentación |  | 83h | 2016-03-18 A | 2016-04-01 A |  | 100% |  | 2016-03-18 | 2016-04-01 | 83h |  |  | finish no earlier than 2016-04-01 | PM | 83h | 83h |
| 4 | 1.1.2 | 1.1. Elaborar Acta de Proyecto |  | 24.62d | 2016-04-15 A | 2016-05-20 A |  | 100% |  | 2016-04-15 | 2016-05-20 | 24.63d |  |  | finish no earlier than 2016-05-20 | PM | 197h | 197h |
| 5 | 1.1.3 | 1.2. Elaborar Documento de WBS |  | 10.38d | 2016-05-06 A | 2016-05-20 A |  | 100% |  | 2016-05-06 | 2016-05-20 | 10.38d |  |  | finish no earlier than 2016-05-20 | LD | 83h | 83h |
| 6 | 1.1.4 | 1.3. Elaborar Gantt de Proyect |  | 9.38d | 2016-05-13 A | 2016-05-27 A |  | 100% |  | 2016-05-13 | 2016-05-27 | 9.38d |  |  | finish no earlier than 2016-05-27 | PM | 75h | 75h |
| 7 | 1.1.5 | 1.4. Elaborar Matriz de Habilidades y Competencias |  | 6.38d | 2016-05-06 A | 2016-05-20 A |  | 100% |  | 2016-05-06 | 2016-05-20 | 6.38d |  |  | finish no earlier than 2016-05-20 | LD | 51h | 51h |
| 8 | 1.1.6 | 1.5. Elaborar Matriz de Roles y Responsabilidade |  | 6.38d | 2016-05-06 A | 2016-05-20 A |  | 100% |  | 2016-05-06 | 2016-05-20 | 6.38d |  |  | finish no earlier than 2016-05-20 | LD | 51h | 51h |
| 9 | 1.1.7 | 1.6. Elaborar Matriz de Comunicaciones |  | 6.38d | 2016-05-06 A | 2016-05-20 A |  | 100% |  | 2016-05-06 | 2016-05-20 | 6.38d |  |  | finish no earlier than 2016-05-20 | LD | 51h | 51h |
| 10 | 1.1.8 | 1.7. Elaborar Matriz de Costos de Proyecto |  | 10.38d | 2016-05-06 | 2016-05-20 |  |  |  | 2016-05-06 | 2016-05-20 | 10.38d | 118.5d |  | start no earlier than 2016-05-06 | PM | 83h |  |
| 11 | 1.1.9 | 1.8. Elaborar Documentos Gestión de Riesgos |  | 10.38d | 2016-05-06 A | 2016-05-20 A |  | 100% |  | 2016-05-06 | 2016-05-20 | 10.38d |  |  | start no earlier than 2016-05-06 | LD | 83h | 83h |
| 12 | 1.1.10 | 1.9. Aprobar Documentación |  | 0.88d | 2016-05-20 | 2016-05-20 |  |  |  | 2016-05-20 | 2016-05-20 | 0.88d | 118.5d |  | finish no earlier than 2016-05-20 | CATEDRA | 7h |  |
| 13 | 1.2 | **Entregables Etapa 1** |  | 3.75d | 2016-05-20 A | 2016-05-27 |  |  | 3.75d | 2016-05-20 | 2016-05-27 | 30h | 114.75d |  |  |  |  |  |
| 14 | 1.2.1 | [1] Acta de Proyecto | milestone | 0d | 2016-05-20 A | 2016-05-20 A |  | 100% |  | 2016-05-20 | 2016-05-20 | 0d |  |  | finish no earlier than 2016-05-20 |  |  |  |
| 15 | 1.2.2 | [2] Documento de WBS | milestone | 0d | 2016-05-20 A | 2016-05-20 A |  | 100% |  | 2016-05-20 | 2016-05-20 | 0d |  |  | finish no earlier than 2016-05-20 |  |  |  |
| 16 | 1.2.3 | [3] Gantt de Proyect | milestone | 0d | 2016-05-27 A | 2016-05-27 A |  | 100% |  | 2016-05-27 | 2016-05-27 | 0d |  |  | start no earlier than 2016-05-27 |  |  |  |
| 17 | 1.2.4 | [4] Matriz de Habilidades y Competencias | milestone | 0d | 2016-05-20 A | 2016-05-20 A |  | 100% |  | 2016-05-20 | 2016-05-20 | 0d |  |  | start no earlier than 2016-05-20 |  |  |  |
| 18 | 1.2.5 | [5] Matriz de Roles y Responsabilidade | milestone | 0d | 2016-05-20 A | 2016-05-20 A |  | 100% |  | 2016-05-20 | 2016-05-20 | 0d |  |  | start no earlier than 2016-05-20 |  |  |  |
| 19 | 1.2.6 | [6] Matriz de Comunicaciones | milestone | 0d | 2016-05-20 A | 2016-05-20 A |  | 100% |  | 2016-05-20 | 2016-05-20 | 0d |  |  | start no earlier than 2016-05-20 |  |  |  |
| 20 | 1.2.7 | [7] Matriz de Costos de Proyecto | milestone | 0d | 2016-05-20 | 2016-05-20 |  |  |  | 2016-05-20 | 2016-05-20 | 0d | 118.5d |  | start no earlier than 2016-05-20 |  |  |  |
| 21 | 1.2.8 | [8] Documentos Tabla de Riesgos | milestone | 0d | 2016-05-20 A | 2016-05-20 A |  | 100% |  | 2016-05-20 | 2016-05-20 | 0d |  |  | start no earlier than 2016-05-20 |  |  |  |
| 22 | 1.3 | **Etapa 2: Relevamiento y Definición** |  | 61.75d | 2016-05-23 A | 2016-08-26 |  | 8% | 56.53d | 2016-05-23 | 2016-08-26 | 494h | 56d |  |  |  | 404h | 24h |
| 23 | 1.3.1 | 2.1. Elaborar Documentación e Información de Cursos |  | 3d | 2016-05-27 | 2016-05-31 |  |  |  | 2016-05-27 | 2016-05-31 | 3d | 110.62d | 1.62d | start no earlier than 2016-05-27 | AFSR1; AFSR2; AFSSR2 | 72h |  |
| 24 | 1.3.2 | 2.2. Elaborar Informe de Relevamiento |  | 1d | 2016-06-02 | 2016-06-03 | 23 |  |  | 2016-06-02 | 2016-06-03 | 1d | 109d | 0d | finish no earlier than 2016-06-03 | AFSR1; AFSR2; AFSSR2 | 24h |  |
| 25 | 1.3.3 | 2.3. Elaborar Casos de Uso del Negocio |  | 1d | 2016-06-03 | 2016-06-06 | 24 |  |  | 2016-06-03 | 2016-06-06 | 1d | 109d |  | finish no earlier than 2016-06-03 | AFSR1; AFSR2; AFSSR2 | 24h |  |
| 26 | 1.3.4 | 2.4. Elaborar Documento de Arquitectura |  | 2d | 2016-05-27 | 2016-05-30 |  |  |  | 2016-05-27 | 2016-05-30 | 2d | 110.62d | 0d | start no earlier than 2016-05-27 | LD; ARQ | 32h |  |
| 27 | 1.3.5 | 2.5. Elaborar Documento de Diseño de Interfaces |  | 3d | 2016-05-31 | 2016-06-03 | 26 |  |  | 2016-05-31 | 2016-06-03 | 3d | 110.62d |  |  | LD; ARQ | 48h |  |
| 28 | 1.3.6 | 2.6. Elaborar Presentación Comercial |  | 17.88d | 2016-08-01 | 2016-08-26 |  |  |  | 2016-08-01 | 2016-08-26 | 17.88d | 56d |  | start no earlier than 2016-08-01 | PM | 143h |  |
| 29 | 1.3.7 | 2.7. Elaborar Poster |  | 4.62d | 2016-08-01 | 2016-08-05 |  |  |  | 2016-08-01 | 2016-08-05 | 4.63d | 69.25d |  | finish no earlier than 2016-08-05 | LD | 37h |  |
| 30 | 1.3.8 | 2.8. Elaborar Tablero de Control |  | 3d | 2016-05-23 A | 2016-05-27 A |  | 100% |  | 2016-05-23 | 2016-05-27 | 3d |  |  | finish no earlier than 2016-05-27 | PM | 24h | 24h |

| ID | WBS | Task | Type | Duration | Start | Finish | Predecessors | Baseline start | Baseline finish | Baseline duration | Total slack | Free slack | Constraint | Resources | Work |
| --- | --- | --- | --- | --- | --- | --- | --- | --- | --- | --- | --- | --- | --- | --- | --- |
| 31 | 1.4 | **Entregables Etapa 2** |  | 58.75d | 2016-05-27 | 2016-08-26 |  | 2016-05-27 | 2016-08-26 | 470h | 56d |  |  |  |  |
| 32 | 1.4.1 | [1] Documentación e Información de Curso | milestone | 0d | 2016-06-03 | 2016-06-03 |  | 2016-06-03 | 2016-06-03 | 0d | 110d |  | finish no earlier than 2016-06-03 |  |  |
| 33 | 1.4.2 | [2] Documentación de Relevamiento | milestone | 0d | 2016-06-03 | 2016-06-03 |  | 2016-06-03 | 2016-06-03 | 0d | 110d |  | finish no earlier than 2016-06-03 |  |  |
| 34 | 1.4.3 | [3] Documentaicón de Casos de Uso del Negocio | milestone | 0d | 2016-06-03 | 2016-06-03 |  | 2016-06-03 | 2016-06-03 | 0d | 110d |  | finish no earlier than 2016-06-03 |  |  |
| 35 | 1.4.4 | [4] Documentación de Arquitectura | milestone | 0d | 2016-06-03 | 2016-06-03 |  | 2016-06-03 | 2016-06-03 | 0d | 110d |  | finish no earlier than 2016-06-03 |  |  |
| 36 | 1.4.5 | [5] Documentación de Diseño de Interfaces | milestone | 0d | 2016-06-03 | 2016-06-03 |  | 2016-06-03 | 2016-06-03 | 0d | 110d |  | start no earlier than 2016-06-03 |  |  |
| 37 | 1.4.6 | [6] Documentación Presentación Comercial | milestone | 0d | 2016-08-26 | 2016-08-26 |  | 2016-08-26 | 2016-08-26 | 0d | 56d |  | start no earlier than 2016-08-26 |  |  |
| 38 | 1.4.7 | [7] Documentación Poster | milestone | 0d | 2016-08-05 | 2016-08-05 |  | 2016-08-05 | 2016-08-05 | 0d | 69.25d |  | finish no earlier than 2016-08-05 |  |  |
| 39 | 1.4.8 | [8] Documentación Tablero de Control Primera Presentación | milestone | 0d | 2016-05-27 | 2016-05-27 |  | 2016-05-27 | 2016-05-27 | 0d | 114.75d |  | start no earlier than 2016-05-27 |  |  |
| 40 | 1.5 | **Etapa 3: Análisis, Desarrollo y Testing** |  | 105.12d | 2016-06-13 | 2016-11-18 |  | 2016-06-13 | 2016-11-18 | 841h | 0d |  |  |  | 2132h |
| 41 | 1.5.1 | **Incremento 3.1** |  | 36d | 2016-06-13 | 2016-08-05 |  | 2016-06-13 | 2016-08-05 | 288h | 69.12d |  |  |  | 840h |
| 42 | 1.5.1.1 | 3.1.1. Casos de uso de interfaces de usuario |  | 5d | 2016-06-13 | 2016-06-21 |  | 2016-06-13 | 2016-06-21 | 5d | 97.12d | 0d | start no earlier than 2016-06-13 | AFSSR1 | 40h |
| 43 | 1.5.1.2 | 3.1.2. Casos de uso del módulo de gestión de perfiles |  | 5d | 2016-06-13 | 2016-06-21 |  | 2016-06-13 | 2016-06-21 | 5d | 69.12d | 0d | start no earlier than 2016-06-13 | AFSR1; AFSR2 | 80h |
| 44 | 1.5.1.3 | 3.1.3. Casos de uso del módulo de gestión de cursos |  | 3d | 2016-06-21 | 2016-06-24 | 43 | 2016-06-21 | 2016-06-24 | 3d | 69.12d | 0d |  | AFSR1; AFSR2 | 48h |
| 45 | 1.5.1.4 | 3.1.4. Documentación de Casos de Prueba de Sistemas |  | 3d | 2016-06-21 | 2016-06-24 | 42 | 2016-06-21 | 2016-06-24 | 3d | 97.12d |  |  | AFSSR1 | 24h |
| 46 | 1.5.1.5 | 3.1.5. Documentación de Casos de Prueba Integrales |  | 3d | 2016-06-24 | 2016-06-29 | 44 | 2016-06-24 | 2016-06-29 | 3d | 69.12d | 0d |  | AFSR1; AFSR2 | 48h |
| 47 | 1.5.1.6 | 3.1.6. Código fuente de interfaces de usuario |  | 10d | 2016-06-29 | 2016-07-15 | 46 | 2016-06-29 | 2016-07-15 | 10d | 69.12d | 0d |  | DSR1; DSSR1; DJR1 | 240h |
| 48 | 1.5.1.7 | 3.1.7. Código fuente del módulo de gestión de perfiles |  | 5d | 2016-06-29 | 2016-07-06 | 46 | 2016-06-29 | 2016-07-06 | 5d | 79.12d | 10d |  | DSR2; DSSR2 | 80h |
| 49 | 1.5.1.8 | 3.1.8. Código fuente del módulo de gestión de cursos |  | 5d | 2016-07-15 | 2016-07-22 | 47 | 2016-07-15 | 2016-07-22 | 5d | 69.12d | 0d |  | DSR1; DSSR1; DJR1 | 120h |
| 50 | 1.5.1.9 | 3.1.9. Documento de pruebas ejecutadas de Sistemas |  | 5d | 2016-07-22 | 2016-07-29 | 48, 49 | 2016-07-22 | 2016-07-29 | 5d | 69.12d | 0d |  | AQ2; AQ1 | 80h |
| 51 | 1.5.1.10 | 3.1.10. Documento de pruebas ejecutadas Integrales |  | 5d | 2016-07-29 | 2016-08-05 | 50 | 2016-07-29 | 2016-08-05 | 5d | 69.12d |  |  | AQ1; AQ2 | 80h |
| 52 | 1.5.2 | **Entregables Incremento 3.1** |  | 0d | 2016-08-05 | 2016-08-05 |  | 2016-08-05 | 2016-08-05 | 0h | 27.12d | 0d |  |  |  |
| 53 | 1.5.2.1 | [1] Código fuente de la aplicación | milestone | 0d | 2016-08-05 | 2016-08-05 |  | 2016-08-05 | 2016-08-05 | 0d | 27.12d |  | start no earlier than 2016-08-05 |  |  |
| 54 | 1.5.2.2 | [2] Manual de usuario. | milestone | 0d | 2016-08-05 | 2016-08-05 |  | 2016-08-05 | 2016-08-05 | 0d | 27.12d |  | start no earlier than 2016-08-05 |  |  |
| 55 | 1.5.2.3 | [3] Documento de pruebas ejecutadas de Sistemas e Integrales | milestone | 0d | 2016-08-05 | 2016-08-05 |  | 2016-08-05 | 2016-08-05 | 0d | 27.12d |  | start no earlier than 2016-08-05 |  |  |
| 56 | 1.5.2.4 | [4] Documento de Casos de Uso/Arquitectura Incremento 1 | milestone | 0d | 2016-08-05 | 2016-08-05 |  | 2016-08-05 | 2016-08-05 | 0d | 27.12d |  | start no earlier than 2016-08-05 |  |  |

| ID | WBS | Task | Type | Duration | Start | Finish | Predecessors | Baseline start | Baseline finish | Baseline duration | Total slack | Free slack | Constraint | Resources | Work |
| --- | --- | --- | --- | --- | --- | --- | --- | --- | --- | --- | --- | --- | --- | --- | --- |
| 57 | 1.5.3 | **Incremento 3.2** |  | 45.38d | 2016-08-08 | 2016-10-14 |  | 2016-08-08 | 2016-10-14 | 363h | 23.75d |  |  |  | 1152h |
| 58 | 1.5.3.1 | 3.2.1. Casos de uso del módulo de autoaprendizaje del sistema |  | 5d | 2016-08-08 | 2016-08-16 | 52 | 2016-08-08 | 2016-08-16 | 5d | 64.12d |  |  | AFSSR1 | 40h |
| 59 | 1.5.3.2 | 3.2.2. Casos de uso del submódulo inteligente de selección de contenido (CAT) |  | 5d | 2016-08-08 | 2016-08-16 | 52 | 2016-08-08 | 2016-08-16 | 5d | 61.12d | 0d |  | AFSR1 | 40h |
| 60 | 1.5.3.3 | 3.2.3. Casos de uso del módulo de gestión de contenido |  | 5d | 2016-08-08 | 2016-08-16 | 52 | 2016-08-08 | 2016-08-16 | 5d | 27.12d | 0d |  | AFSR2 | 40h |
| 61 | 1.5.3.4 | 3.2.4. Documentación de Casos de Prueba de Sistemas |  | 3d | 2016-08-16 | 2016-08-19 | 59 | 2016-08-16 | 2016-08-19 | 3d | 61.12d |  |  | AFSR1 | 24h |
| 62 | 1.5.3.5 | 3.2.5. Documentación de Casos de Prueba Integrales |  | 3d | 2016-08-16 | 2016-08-19 | 60 | 2016-08-16 | 2016-08-19 | 3d | 27.12d | 0d |  | AFSR2 | 24h |
| 63 | 1.5.3.6 | 3.2.6. Código fuente del módulo de autoaprendizaje del sistema |  | 15d | 2016-08-19 | 2016-09-12 | 62 | 2016-08-19 | 2016-09-12 | 15d | 46.12d |  |  | DSR1; DSSR1; DJR1 | 360h |
| 64 | 1.5.3.7 | 3.2.7. Código fuente del submódulo inteligente de selección de contenido (CAT) |  | 10d | 2016-08-19 | 2016-09-02 | 62 | 2016-08-19 | 2016-09-02 | 10d | 27.12d | 0d |  | DSR2; DSSR2 | 160h |
| 65 | 1.5.3.8 | 3.2.8. Código fuente del módulo de gestión de contenido |  | 10d | 2016-09-05 | 2016-09-19 | 64 | 2016-09-05 | 2016-09-19 | 10d | 27.12d | 0d |  | DSR2; DSSR2 | 160h |
| 66 | 1.5.3.9 | 3.2.9. Documento de pruebas ejecutadas de Sistemas |  | 7d | 2016-09-19 | 2016-09-28 | 65 | 2016-09-19 | 2016-09-28 | 7d | 27.12d | 3.38d |  | AQ1; AQ2 | 112h |
| 67 | 1.5.3.10 | 3.2.10. Documento de pruebas ejecutadas Integrales |  | 7d | 2016-10-04 | 2016-10-14 | 66 | 2016-10-04 | 2016-10-14 | 7d | 23.75d |  | finish no earlier than 2016-10-14 | AQ1; AQ2 | 112h |
| 68 | 1.5.3.11 | [*] Elaborar Tablero de Control Segunda Presentación |  | 10d | 2016-09-02 | 2016-09-16 |  | 2016-09-02 | 2016-09-16 | 10d | 42.12d |  | start no earlier than 2016-09-02 | PM | 80h |
| 69 | 1.5.4 | **Entregables Incremento 3.2** |  | 18.38d | 2016-09-16 | 2016-10-14 |  | 2016-09-16 | 2016-10-14 | 147h | 21.75d | 0d |  |  |  |
| 70 | 1.5.4.1 | [1] Código fuente de la aplicación | milestone | 0d | 2016-10-14 | 2016-10-14 |  | 2016-10-14 | 2016-10-14 | 0d | 21.75d |  | start no earlier than 2016-10-14 |  |  |
| 71 | 1.5.4.2 | [2] Manual de usuario | milestone | 0d | 2016-10-14 | 2016-10-14 |  | 2016-10-14 | 2016-10-14 | 0d | 21.75d |  | start no earlier than 2016-10-14 |  |  |
| 72 | 1.5.4.3 | [3] Documento de pruebas ejecutadas (Fin del desarollo 21/10) | milestone | 0d | 2016-10-14 | 2016-10-14 |  | 2016-10-14 | 2016-10-14 | 0d | 21.75d |  | start no earlier than 2016-10-14 |  |  |
| 73 | 1.5.4.4 | [4] Documento Tablero de Control Segunda Presentación | milestone | 0d | 2016-09-16 | 2016-09-16 |  | 2016-09-16 | 2016-09-16 | 0d | 40.12d |  | start no earlier than 2016-09-16 |  |  |
| 74 | 1.5.4.5 | [5] Documento de Casos de Uso/Arquitectura Incremento 2 | milestone | 0d | 2016-10-14 | 2016-10-14 |  | 2016-10-14 | 2016-10-14 | 0d | 21.75d |  | start no earlier than 2016-10-14 |  |  |
| 75 | 1.5.5 | **Etapa 4: Implementación** |  | 14.25d | 2016-10-14 | 2016-11-04 |  | 2016-10-14 | 2016-11-04 | 114h | 9.5d |  |  |  | 52h |
| 76 | 1.5.5.1 | 4.1.Manuales de usuario |  | 2d | 2016-10-14 | 2016-10-18 | 69 | 2016-10-14 | 2016-10-18 | 2d | 21.75d |  |  | AFSR1 | 16h |
| 77 | 1.5.5.2 | 4.2 Solución integral en entornos Productivos |  | 2d | 2016-10-14 | 2016-10-18 | 69 | 2016-10-14 | 2016-10-18 | 2d | 21.75d |  |  | ARQ; LD | 32h |
| 78 | 1.5.5.3 | [*] Elaborar Tablero de Control Tercera Presentación |  | 4h | 2016-11-04 | 2016-11-04 |  | 2016-11-04 | 2016-11-04 | 4h | 9.5d |  | finish no earlier than 2016-11-04 | PM | 4h |
| 79 | 1.5.6 | **Entregables Etapa 4** |  | 9.62d | 2016-10-21 | 2016-11-04 |  | 2016-10-21 | 2016-11-04 | 77h | 6.5d |  |  |  |  |
| 80 | 1.5.6.1 | [1] Documentación Manual de Usuario | milestone | 0d | 2016-10-21 | 2016-10-21 |  | 2016-10-21 | 2016-10-21 | 0d | 16.12d |  | start no earlier than 2016-10-21 |  |  |
| 81 | 1.5.6.2 | [2] Documentación Solución integral en entornos Productivos | milestone | 0d | 2016-10-21 | 2016-10-21 |  | 2016-10-21 | 2016-10-21 | 0d | 16.12d |  | finish no earlier than 2016-10-21 |  |  |
| 82 | 1.5.6.3 | [3] Documentación Tablero de Control Tercera Presentación | milestone | 0d | 2016-11-04 | 2016-11-04 |  | 2016-11-04 | 2016-11-04 | 0d | 6.5d |  | finish no earlier than 2016-11-04 |  |  |

| ID | WBS | Task | Type | Duration | Start | Finish | Predecessors | Baseline start | Baseline finish | Baseline duration | Total slack | Constraint | Resources | Work |
| --- | --- | --- | --- | --- | --- | --- | --- | --- | --- | --- | --- | --- | --- | --- |
| 83 | 1.5.7 | **Etapa 5: Cierre** |  | 5.62d | 2016-11-11 | 2016-11-18 |  | 2016-11-11 | 2016-11-18 | 45h | 0d |  |  | 88h |
| 84 | 1.5.7.1 | 5.1 Documento Lecciones Aprendidas |  | 3d | 2016-11-15 | 2016-11-18 | 79 | 2016-11-15 | 2016-11-18 | 3d | 0d | finish no earlier than 2016-11-18 | LD | 24h |
| 85 | 1.5.7.2 | 5.2 Documento Cierre del Proyecto |  | 3d | 2016-11-15 | 2016-11-18 | 79 | 2016-11-15 | 2016-11-18 | 3d | 0d | finish no earlier than 2016-11-18 | PM | 24h |
| 86 | 1.5.7.3 | 5.3 Presentación Final (18/11) |  | 5d | 2016-11-11 | 2016-11-18 |  | 2016-11-11 | 2016-11-18 | 5d | 0.62d | start no earlier than 2016-11-11 | PM | 40h |
| 87 | 1.5.8 | **Entregables Etapa 5** |  | 0d | 2016-11-18 | 2016-11-18 |  | 2016-11-18 | 2016-11-18 | 0h | 0.62d |  |  |  |
| 88 | 1.5.8.1 | [1] Documento Lecciones Aprendidas | milestone | 0d | 2016-11-18 | 2016-11-18 |  | 2016-11-18 | 2016-11-18 | 0d | 0.62d | start no earlier than 2016-11-18 |  |  |
| 89 | 1.5.8.2 | [2] Documento Cierre del Proyecto | milestone | 0d | 2016-11-18 | 2016-11-18 |  | 2016-11-18 | 2016-11-18 | 0d | 0.62d | start no earlier than 2016-11-18 |  |  |
| 90 | 1.5.8.3 | [3] Presentación Final | milestone | 0d | 2016-11-18 | 2016-11-18 |  | 2016-11-18 | 2016-11-18 | 0d | 0.62d | finish no earlier than 2016-11-18 |  |  |
